% Complete,Constraint Date,Constraint Type,Is Milestone,Milestone,Task Mode,Task Name,Duration,Start,Finish,Predecessors,Work,Resource Names,Baseline Start,Baseline Finish,Actual Start,Actual Finish,Physical % Complete,Number1,Number2
24%,,No,Auto Scheduled,Surface Finish Table 1 Implementation complete,288.81 days,Mon 15/07/24,Thu 21/08/25,,123.81 hrs,,Mon 15/07/24,Mon 15/07/24,Wed 04/12/24,NA,142,0
100%,,No,Auto Scheduled,Surface Finish Review current state,1 day,Mon 15/07/24,Mon 15/07/24,,2 hrs,James Bick,Mon 15/07/24,Mon 15/07/24,Wed 04/12/24,Wed 04/12/24,142,142
100%,,No,Auto Scheduled,Surface Finish Table 1 Identify Issues,1 day,Mon 15/07/24,Mon 15/07/24,40,2 hrs,James Bick,Mon 15/07/24,Mon 15/07/24,Mon 15/07/24,Mon 15/07/24,0,0
100%,,No,Auto Scheduled,Surface Finish Table 1 Rectification work,1 day,Tue 24/09/24,Tue 24/09/24,,8 hrs,,Tue 16/07/24,Fri 19/07/24,Wed 11/09/24,Wed 11/09/24,0,0
100%,,No,Auto Scheduled,Surface Finish Table 1 Lawarance Gauge Diviations,1 day,Tue 24/09/24,Tue 24/09/24,41FS+50 days,2 hrs,James Bick[25%],Tue 16/07/24,Tue 16/07/24,Wed 11/09/24,Wed 11/09/24,57,57
100%,,No,Auto Scheduled,Surface Finish Table 1 Analysis Methods Referencing,1 day,Tue 24/09/24,Tue 24/09/24,41FS+50 days,2 hrs,James Bick[25%],Wed 17/07/24,Wed 17/07/24,Wed 11/09/24,Wed 11/09/24,56,56
100%,,No,Auto Scheduled,Surface Finish Table 1 XRF Referencing,1 day,Tue 24/09/24,Tue 24/09/24,41FS+50 days,2 hrs,James Bick[25%],Thu 18/07/24,Thu 18/07/24,Wed 11/09/24,Wed 11/09/24,55,55
100%,,No,Auto Scheduled,Surface Finish Table 1 Hull Cell Referencing,1 day,Tue 24/09/24,Tue 24/09/24,41FS+50 days,2 hrs,James Bick[25%],Fri 19/07/24,Fri 19/07/24,Wed 11/09/24,Wed 11/09/24,54,54
22%,,No,Auto Scheduled,Surface Finish Table 1 Rework Scoping,78.81 days,Fri 28/02/25,Wed 18/06/25,,89.81 hrs,Kurtis Parsons[13%],Thu 18/07/24,Wed 21/08/24,Mon 03/03/25,NA,0,0
100%,,No,Auto Scheduled,Surface Finish Table 1 Rework Time line agreed,1 day,Fri 28/02/25,Mon 03/03/25,46FS+112 days,1 hr,James Fleming[13%],Thu 18/07/24,Fri 19/07/24,Mon 03/03/25,Mon 03/03/25,228,227
20%,,No,Auto Scheduled,Surface Finish Table 1 Rework Period,40 days,Mon 03/03/25,Wed 18/06/25,48FS+30 days,10 hrs,James Bick[3%],Mon 22/07/24,Wed 14/08/24,Mon 03/03/25,NA,224,0
0%,,No,Auto Scheduled,Surface Finish Table 1 Final Review & Approval,15 days,Wed 30/07/25,Wed 20/08/25,49FS+30 days,20 hrs,Mike Warriner[17%],Thu 15/08/24,Mon 19/08/24,NA,NA,0,0
0%,,No,Auto Scheduled,Surface Finish Table 1 released,1 day,Wed 20/08/25,Thu 21/08/25,50,2 hrs,Martyn Price[25%],Tue 20/08/24,Tue 20/08/24,NA,NA,0,0
0%,,No,Auto Scheduled,Surface Finish Table 1 Work Package Complete,0 days,Thu 21/08/25,Thu 21/08/25,51,0 hrs,James Fleming[0%],Wed 21/08/24,Wed 21/08/24,NA,NA,0,0
